# СКД_Сияние

Schedule from MS Project, 2020-03-16 to 2021-03-31, costs in р..
ISTU

## Calendars

- Стандартный: Mon-Fri 09:00-13:00, 14:00-18:00; Sat-Sun off. Exceptions (off unless hours are given): 2020-05-01 to 2020-05-05 (праздник труда), 2020-05-11 (день победы), 2020-06-12 (День России), 2020-11-04 (День народного единства).

## Resources

| Resource | Rate | Cost per use |
| --- | --- | --- |
| Менеджер проекта | 2500 | 5000 |
| Ведущий аналитик | 2500 |  |
| Разработчик | 2500 |  |
| Тестировщик | 1500 |  |
| Монтажник | 2500 | 6000 |
| Безопасник | 2000 |  |
| Технический писатель | 1000 |  |
| Внедренец | 1700 |  |
| Специалист ТП | 1000 |  |
| Системный администратор | 2500 | 6000 |
| Архитектор | 3500 |  |

## Schedule

| ID | WBS | Task | Duration | Start | Finish | Predecessors | Total slack | Free slack | Resources | Work | Cost |
| --- | --- | --- | --- | --- | --- | --- | --- | --- | --- | --- | --- |
| 1 | 1 | **Обследование** | 13d | 2020-03-16 | 2020-04-01 |  | 0d |  |  | 80h | 200,000 |
| 2 | 1.1 | AS-IS | 5d | 2020-03-16 | 2020-03-20 |  | 5d | 2.5d | Ведущий аналитик [40%] | 16h | 40,000 |
| 3 | 1.2 | Потребности ЗЛ | 7.5d | 2020-03-16 | 2020-03-25 | 2FF | 2.5d |  | Ведущий аналитик [40%] | 24h | 60,000 |
| 4 | 1.3 | Решения-аналоги | 10d | 2020-03-16 | 2020-03-27 | 2FF | 0d |  | Ведущий аналитик [20%] | 16h | 40,000 |
| 5 | 1.4 | Концепция | 1d | 2020-03-30 | 2020-03-30 | 2, 3, 4 | 0d |  | Ведущий аналитик | 8h | 20,000 |
| 6 | 1.5 | Отчет об обследовании | 2d | 2020-03-31 | 2020-04-01 | 5 | 0d |  | Ведущий аналитик | 16h | 40,000 |
| 7 | 2 | **Техническое задание** | 10d | 2020-04-02 | 2020-04-15 |  | 0d |  |  | 136h | 321,000 |
| 8 | 2.1 | Анализ потребностей | 1d | 2020-04-02 | 2020-04-02 | 6 | 0d |  | Ведущий аналитик | 8h | 20,000 |
| 9 | 2.2 | Формирование требований | 2d | 2020-04-03 | 2020-04-06 | 8 | 0d |  | Ведущий аналитик | 16h | 40,000 |
| 10 | 2.3 | Техническое задание (подготовка документа) | 2d | 2020-04-07 | 2020-04-08 | 9 | 0d |  | Ведущий аналитик; Технический писатель | 32h | 56,000 |
| 11 | 2.4 | Согласование и утверждение | 5d | 2020-04-09 | 2020-04-15 | 10 | 0d |  | Ведущий аналитик; Менеджер проекта | 80h | 205,000 |
| 12 | 3 | **Технический проект** | 14d | 2020-04-16 | 2020-05-08 |  | 0d |  |  | 248h | 625,000 |
| 13 | 3.1 | Архитектурная спецификация | 1d | 2020-04-16 | 2020-04-16 | 11 | 7d |  | Архитектор | 8h | 28,000 |
| 14 | 3.2 | Функциональные спецификации | 3d | 2020-04-16 | 2020-04-20 | 11 | 0d |  | Ведущий аналитик; Разработчик | 48h | 120,000 |
| 15 | 3.3 | Экранные формы | 2d | 2020-04-21 | 2020-04-22 | 14 | 0d |  | Ведущий аналитик; Разработчик | 32h | 80,000 |
| 16 | 3.4 | Формы отчетов | 2d | 2020-04-23 | 2020-04-24 | 15 | 0d |  | Ведущий аналитик; Разработчик | 32h | 80,000 |
| 17 | 3.5 | Спецификация закупаемых изделий | 1d | 2020-04-27 | 2020-04-27 | 16 | 0d |  | Ведущий аналитик; Разработчик | 16h | 40,000 |
| 18 | 3.6 | ИБ спецификация | 2d | 2020-04-16 | 2020-04-17 | 11 | 6d |  | Безопасник | 16h | 32,000 |
| 19 | 3.7 | Пояснительная записка (подготовка документа) | 1d | 2020-04-28 | 2020-04-28 | 13, 14, 15, 16, 17, 18 | 0d |  | Ведущий аналитик; Разработчик | 16h | 40,000 |
| 20 | 3.8 | Согласование и утверждение | 5d | 2020-04-29 | 2020-05-08 | 19 | 0d |  | Ведущий аналитик; Менеджер проекта | 80h | 205,000 |
| 21 | 4 | **Разработка** | 65d | 2020-05-12 | 2020-08-11 |  | 0d |  |  | 1048h | 2,044,800 |
| 22 | 4.1 | Разработка | 60d | 2020-05-12 | 2020-08-04 | 20 | 0d |  | Разработчик; Тестировщик | 960h | 1,920,000 |
| 23 | 4.2 | Тестирование | 5d | 2020-08-05 | 2020-08-11 | 22 | 0d |  | Тестировщик | 40h | 60,000 |
| 24 | 4.3 | Эксплуатационная документация | 3d | 2020-08-07 | 2020-08-11 | 23FF | 0d |  | Внедренец; Технический писатель | 48h | 64,800 |

| ID | WBS | Task | Duration | Start | Finish | Predecessors | Total slack | Resources | Work | Cost |
| --- | --- | --- | --- | --- | --- | --- | --- | --- | --- | --- |
| 25 | 5 | **Испытания** | 15d | 2020-08-12 | 2020-09-01 |  | 0d |  | 296h | 640,000 |
| 26 | 5.1 | Предварительные | 1d | 2020-08-12 | 2020-08-12 | 24 | 0d | Ведущий аналитик; Менеджер проекта | 16h | 45,000 |
| 27 | 5.2 | Опытная эксплуатация | 10d | 2020-08-13 | 2020-08-26 | 26 | 0d | Ведущий аналитик; Менеджер проекта; Специалист ТП | 240h | 485,000 |
| 28 | 5.3 | Приемочные | 1d | 2020-08-27 | 2020-08-27 | 27 | 0d | Ведущий аналитик; Менеджер проекта | 16h | 45,000 |
| 29 | 5.4 | Подписание актов | 3d | 2020-08-28 | 2020-09-01 | 28 | 0d | Менеджер проекта | 24h | 65,000 |
| 30 | 6 | **Внедрение (пилот)** | 50d | 2020-09-02 | 2020-11-11 |  | 0d |  | 560h | 1,353,000 |
| 31 | 6.1 | Закупка оборудования | 40d | 2020-09-02 | 2020-10-27 | 29 | 0d | Менеджер проекта | 320h | 805,000 |
| 32 | 6.2 | Пуско-наладочные работы | 10d | 2020-10-28 | 2020-11-11 | 31 | 0d | Монтажник; Системный администратор | 160h | 412,000 |
| 33 | 6.3 | Подготовка персонала | 10d | 2020-09-02 | 2020-09-15 | 29 | 40d | Внедренец | 80h | 136,000 |
| 34 | 7 | **Тираж** | 100d | 2020-11-12 | 2021-03-31 |  | 0d |  | 1520h | 3,625,000 |
| 35 | 7.1 | Закупка оборудования | 40d | 2020-11-12 | 2021-01-06 | 30 | 0d | Менеджер проекта | 320h | 805,000 |
| 36 | 7.2 | Пуско-наладочные работы | 60d | 2021-01-07 | 2021-03-31 | 35 | 0d | Монтажник; Системный администратор | 960h | 2,412,000 |
| 37 | 7.3 | Подготовка персонала | 30d | 2020-11-12 | 2020-12-23 | 30 | 70d | Внедренец | 240h | 408,000 |
