# СЭД Политеха

Schedule from MS Project, 2020-10-27 to 2021-06-24, costs in ₽, A marks actual dates.

## Calendars

- Стандартный: Mon-Fri 09:00-13:00, 14:00-18:00; Sat-Sun off. Exceptions (off unless hours are given): 2020-11-04 (День согласия и примирения), 2020-12-31 to 2021-01-08 (НГ), 2021-02-23 (23 февраля), 2021-03-08 (8 марта), 2021-05-03 (1 мая), 2021-05-10 (9 мая), 2021-06-14 (День России).

## Resources

| Resource | Rate | Cost per use |
| --- | --- | --- |
| Разработчик 1 | 850 |  |
| Разработчик 2 | 850 |  |
| Архитектор | 1300 |  |
| Менеджер проекта | 1400 |  |
| Тестировщик 1 | 700 |  |
| Внедренец 1 | 300 | 2000 |
| Внедренец 2 | 300 | 2000 |
| Инженер по ИБ | 1000 |  |
| Аналитик 1 | 900 |  |
| Аналитик 2 | 900 |  |
| Системный инженер (администратор) | 850 |  |

## Schedule

| ID | WBS | Task | Duration | Start | Finish | Predecessors | Complete | Remaining | Baseline start | Baseline finish | Baseline duration | Total slack | Free slack | Resources | Work | Actual work | Cost | Baseline cost | Actual cost |
| --- | --- | --- | --- | --- | --- | --- | --- | --- | --- | --- | --- | --- | --- | --- | --- | --- | --- | --- | --- |
| 1 | 1 | **СЭД Политеха** | 160d | 2020-10-27 A | 2021-06-24 |  | 4% | 154.2d | 2020-10-26 | 2021-06-21 | 158d | 0d |  |  | 3440h | 60h | 2,981,600 | 2,959,200 | 84,000 |
| 2 | 1.1 | **Инициация проекта** | 9d | 2020-10-27 A | 2020-11-09 |  | 83% | 1.5d | 2020-10-26 | 2020-11-03 | 7d | 0d |  |  | 72h | 60h | 100,800 | 78,400 | 84,000 |
| 3 | 1.1.1 | Разработка устава проекта | 4d | 2020-10-27 A | 2020-10-31 A |  | 100% |  | 2020-10-26 | 2020-10-27 | 2d |  |  | Менеджер проекта | 32h | 32h | 44,800 | 22,400 | 44,800 |
| 4 | 1.1.2 | Формирование рабочей группы | 2d | 2020-11-02 A | 2020-11-03 A | 3 | 100% |  | 2020-10-28 | 2020-10-29 | 2d |  |  | Менеджер проекта | 16h | 16h | 22,400 | 22,400 | 22,400 |
| 5 | 1.1.3 | Издаем приказ о старте проекта | 3d | 2020-11-05 A | 2020-11-09 | 4 | 50% | 1.5d | 2020-10-30 | 2020-11-03 | 3d | 0d |  | Менеджер проекта | 24h | 12h | 33,600 | 33,600 | 16,800 |
| 6 | 1.2 | **Провести обследование** | 21d | 2020-11-10 | 2020-12-08 |  |  |  | 2020-11-05 | 2020-12-03 | 21d | 0d |  |  | 384h |  | 369,600 | 369,600 |  |
| 7 | 1.2.1 | Подготовка и планирование | 1d | 2020-11-10 | 2020-11-10 | 5 |  |  | 2020-11-05 | 2020-11-05 | 1d | 0d |  | Аналитик 1; Аналитик 2; Менеджер проекта | 24h |  | 25,600 | 25,600 |  |
| 8 | 1.2.2 | Сбор потребностей | 10d | 2020-11-11 | 2020-11-24 | 7 |  |  | 2020-11-06 | 2020-11-19 | 10d | 0d |  | Аналитик 1; Аналитик 2 | 160h |  | 144,000 | 144,000 |  |
| 9 | 1.2.3 | Формирование отчета об обследовании | 5d | 2020-11-25 | 2020-12-01 | 8 |  |  | 2020-11-20 | 2020-11-26 | 5d | 0d |  | Аналитик 1; Аналитик 2 | 80h |  | 72,000 | 72,000 |  |
| 10 | 1.2.4 | Согласование и утверждение ОО | 5d | 2020-12-02 | 2020-12-08 | 9 |  |  | 2020-11-27 | 2020-12-03 | 5d | 0d |  | Аналитик 1; Аналитик 2; Менеджер проекта | 120h |  | 128,000 | 128,000 |  |
| 11 | 1.3 | **Формирование требований** | 13d | 2020-12-09 | 2020-12-25 |  |  |  | 2020-12-04 | 2020-12-22 | 13d | 0d |  |  | 248h |  | 239,200 | 239,200 |  |
| 12 | 1.3.1 | Анализ полученных потребностей и данных | 5d | 2020-12-09 | 2020-12-15 | 10 |  |  | 2020-12-04 | 2020-12-10 | 5d | 0d |  | Аналитик 1; Аналитик 2 | 80h |  | 72,000 | 72,000 |  |
| 13 | 1.3.2 | Разработка технического задания | 3d | 2020-12-16 | 2020-12-18 | 12 |  |  | 2020-12-11 | 2020-12-15 | 3d | 0d |  | Аналитик 1; Аналитик 2 | 48h |  | 43,200 | 43,200 |  |
| 14 | 1.3.3 | Согласование и утверждение ТЗ | 5d | 2020-12-21 | 2020-12-25 | 13 |  |  | 2020-12-16 | 2020-12-22 | 5d | 0d |  | Аналитик 1; Аналитик 2; Архитектор | 120h |  | 124,000 | 124,000 |  |
| 15 | 1.4 | **Проектирование** | 31d | 2020-12-28 | 2021-02-17 |  |  |  | 2020-12-23 | 2021-02-12 | 31d | 0d |  |  | 656h |  | 696,800 | 696,800 |  |
| 16 | 1.4.1 | Схемы БП | 3d | 2020-12-28 | 2020-12-30 | 14 |  |  | 2020-12-23 | 2020-12-25 | 3d | 0d |  | Аналитик 1 | 24h |  | 21,600 | 21,600 |  |
| 17 | 1.4.2 | Целевая оргштатка | 3d | 2021-01-11 | 2021-01-13 | 16 |  |  | 2020-12-28 | 2020-12-30 | 3d | 0d |  | Аналитик 1 | 24h |  | 21,600 | 21,600 |  |
| 18 | 1.4.3 | Архитектурная спецификация | 5d | 2020-12-28 | 2021-01-12 | 14 |  |  | 2020-12-23 | 2020-12-29 | 5d | 1d | 0d | Архитектор | 40h |  | 52,000 | 52,000 |  |
| 19 | 1.4.4 | Альбом форм интерфейсов пользователя | 5d | 2021-01-14 | 2021-01-20 | 17 |  |  | 2021-01-11 | 2021-01-15 | 5d | 0d |  | Аналитик 1 | 40h |  | 36,000 | 36,000 |  |
| 20 | 1.4.5 | Функиональные спецификации | 5d | 2021-01-21 | 2021-01-27 | 19 |  |  | 2021-01-18 | 2021-01-22 | 5d | 0d |  | Аналитик 1 | 40h |  | 36,000 | 36,000 |  |
| 21 | 1.4.6 | Спецификация требований к ПО | 6d | 2021-01-13 | 2021-01-21 | 18 |  |  | 2020-12-30 | 2021-01-18 | 6d | 1d | 0d | Архитектор; Системный инженер (администратор) | 48h |  | 51,600 | 51,600 |  |
| 22 | 1.4.7 | Спецификация требований к ТО | 6d | 2021-01-22 | 2021-02-02 | 21 |  |  | 2021-01-19 | 2021-01-28 | 6d | 1d |  | Архитектор; Системный инженер (администратор) | 48h |  | 51,600 | 51,600 |  |
| 23 | 1.4.8 | Альбом форм выходных документов | 5d | 2021-01-28 | 2021-02-03 | 20 |  |  | 2021-01-25 | 2021-01-29 | 5d | 0d |  | Аналитик 1 | 40h |  | 36,000 | 36,000 |  |
| 24 | 1.4.9 | Спецификация требований к смежным системам | 8d | 2020-12-28 | 2021-01-18 | 14 |  |  | 2020-12-23 | 2021-01-13 | 8d | 4d | 0d | Аналитик 2; Архитектор | 64h |  | 70,400 | 70,400 |  |
| 25 | 1.4.10 | Модель угроз | 3d | 2020-12-28 | 2020-12-30 | 14 |  |  | 2020-12-23 | 2020-12-25 | 3d | 18d |  | Инженер по ИБ | 24h |  | 24,000 | 24,000 |  |
| 26 | 1.4.11 | ЧТЗ на обеспечение ИБ | 3d | 2021-01-11 | 2021-01-13 | 14 |  |  | 2020-12-28 | 2020-12-30 | 3d | 15d |  | Инженер по ИБ | 24h |  | 24,000 | 24,000 |  |
| 27 | 1.4.12 | Поянительная записка | 8d | 2021-01-19 | 2021-01-28 | 24 |  |  | 2021-01-14 | 2021-01-25 | 8d | 4d |  | Аналитик 2; Архитектор | 80h |  | 88,000 | 88,000 |  |
| 28 | 1.4.13 | Согласование и утверждение | 10d | 2021-02-04 | 2021-02-17 | 16, 17, 18, 19, 20, 21, 22, 23, 24, 25, 26, 27 |  |  | 2021-02-01 | 2021-02-12 | 10d | 0d |  | Аналитик 1; Менеджер проекта | 160h |  | 184,000 | 184,000 |  |

| ID | WBS | Task | Duration | Start | Finish | Predecessors | Baseline start | Baseline finish | Baseline duration | Total slack | Free slack | Resources | Work | Cost | Baseline cost |
| --- | --- | --- | --- | --- | --- | --- | --- | --- | --- | --- | --- | --- | --- | --- | --- |
| 29 | 1.5 | **Разработка** | 42d | 2021-02-18 | 2021-04-20 |  | 2021-02-15 | 2021-04-15 | 42d | 0d |  |  | 976h | 788,800 | 788,800 |
| 30 | 1.5.1 | Планирование разработки | 2d | 2021-02-18 | 2021-02-19 | 28 | 2021-02-15 | 2021-02-16 | 2d | 0d |  | Архитектор | 16h | 20,800 | 20,800 |
| 31 | 1.5.2 | Служебные записки | 10d | 2021-02-22 | 2021-03-09 | 30 | 2021-02-17 | 2021-03-03 | 10d | 0d |  | Разработчик 1; Разработчик 2; Тестировщик 1 | 240h | 192,000 | 192,000 |
| 32 | 1.5.3 | Приказы и распоряжения | 10d | 2021-03-10 | 2021-03-23 | 31 | 2021-03-04 | 2021-03-18 | 10d | 0d |  | Разработчик 1; Разработчик 2; Тестировщик 1 | 240h | 192,000 | 192,000 |
| 33 | 1.5.4 | Договоры | 10d | 2021-03-24 | 2021-04-06 | 32 | 2021-03-19 | 2021-04-01 | 10d | 0d |  | Разработчик 1; Разработчик 2; Тестировщик 1 | 240h | 192,000 | 192,000 |
| 34 | 1.5.5 | Входящие и исходящие | 10d | 2021-04-07 | 2021-04-20 | 33 | 2021-04-02 | 2021-04-15 | 10d | 0d |  | Разработчик 1; Разработчик 2; Тестировщик 1 | 240h | 192,000 | 192,000 |
| 35 | 1.6 | **Приемка** | 29d | 2021-04-21 | 2021-06-02 |  | 2021-04-16 | 2021-05-28 | 29d | 0d |  |  | 768h | 590,000 | 590,000 |
| 36 | 1.6.1 | Разработка ПиМИ | 5d | 2021-04-21 | 2021-04-27 | 34 | 2021-04-16 | 2021-04-22 | 5d | 0d |  | Тестировщик 1 | 40h | 28,000 | 28,000 |
| 37 | 1.6.2 | Пуско-наладочные работы для целей испытания | 3d | 2021-04-21 | 2021-04-23 | 34 | 2021-04-16 | 2021-04-20 | 3d | 2d |  | Системный инженер (администратор) | 24h | 20,400 | 20,400 |
| 38 | 1.6.3 | Проведение предварительных испытаний | 2d | 2021-04-28 | 2021-04-29 | 36, 37 | 2021-04-23 | 2021-04-26 | 2d | 0d |  | Аналитик 1; Менеджер проекта | 32h | 36,800 | 36,800 |
| 39 | 1.6.4 | Опытная эксплуатация | 20d | 2021-04-30 | 2021-05-31 | 38 | 2021-04-27 | 2021-05-26 | 20d | 0d |  | Аналитик 1; Менеджер проекта; Внедренец 1; Внедренец 2 | 640h | 468,000 | 468,000 |
| 40 | 1.6.5 | Приемочные испытания | 2d | 2021-06-01 | 2021-06-02 | 39 | 2021-05-27 | 2021-05-28 | 2d | 0d |  | Аналитик 1; Менеджер проекта | 32h | 36,800 | 36,800 |
| 41 | 1.7 | **Внедрение** | 15d | 2021-06-03 | 2021-06-24 |  | 2021-05-31 | 2021-06-21 | 15d | 0d |  |  | 304h | 151,600 | 151,600 |
| 42 | 1.7.1 | Планирование внедения | 2d | 2021-06-03 | 2021-06-04 | 40 | 2021-05-31 | 2021-06-01 | 2d | 0d |  | Внедренец 1; Внедренец 2; Менеджер проекта | 48h | 36,000 | 36,000 |
| 43 | 1.7.2 | Сформировать группу ТП | 1d | 2021-06-07 | 2021-06-07 | 42 | 2021-06-02 | 2021-06-02 | 1d | 12d |  | Менеджер проекта | 8h | 11,200 | 11,200 |
| 44 | 1.7.3 | Подготовка персонала | 8d | 2021-06-15 | 2021-06-24 | 42 | 2021-06-09 | 2021-06-21 | 8d | 0d |  | Внедренец 1; Внедренец 2 | 128h | 42,400 | 42,400 |
| 45 | 1.7.4 | Пуско-наладочные работы для целей внедрения | 5d | 2021-06-07 | 2021-06-11 | 42 | 2021-06-02 | 2021-06-08 | 5d | 4d | 0d | Внедренец 1; Внедренец 2; Системный инженер (администратор) | 120h | 62,000 | 62,000 |
| 46 | 1.8 | **Завершение проекта** | 4d | 2021-06-15 | 2021-06-18 |  | 2021-06-09 | 2021-06-15 | 4d | 4d |  |  | 32h | 44,800 | 44,800 |
| 47 | 1.8.1 | Подписание всех отчетных документов | 2d | 2021-06-15 | 2021-06-16 | 45 | 2021-06-09 | 2021-06-10 | 2d | 6d |  | Менеджер проекта | 16h | 22,400 | 22,400 |
| 48 | 1.8.2 | Собрать обратную связь по реализации проекта | 2d | 2021-06-17 | 2021-06-18 | 45 | 2021-06-11 | 2021-06-15 | 2d | 4d |  | Менеджер проекта | 16h | 22,400 | 22,400 |
